# Sistema DDI

Schedule from a web Gantt chart, 2025-03-02 to 2025-09-30.
Saturdays and Sundays are off

## Schedule

| ID | WBS | Task | Duration | Start | Finish | Predecessors | Complete | inPeople | Status |
| --- | --- | --- | --- | --- | --- | --- | --- | --- | --- |
| 2 | 1 | **Configuracion Inicial** | 25d | 2025-03-02 | 2025-04-04 |  | 100% |  |  |
| 3 | 1.1 | Instalación y configuración de Servicios Web | 7d | 2025-03-02 | 2025-03-11 |  | 100% | Jonathan Velásquez | done |
| 4 | 1.2 | Configuración de Servidor en la red local Municipal | 8d | 2025-03-11 | 2025-03-21 | 3 | 100% | Jonathan Velásquez | done |
| 5 | 1.3 | Instalación y Ejecución de Base de Datos | 5d | 2025-03-23 | 2025-03-28 | 4 | 100% |  |  |
| 6 | 1.4 | Lanzamiento del Sitio Web | 5d | 2025-03-30 | 2025-04-04 | 5 | 100% | Jonathan Velásquez | waiting |
| 7 | 1.5 | Configuración sitio Web | 5d | 2025-03-30 | 2025-04-04 |  | 100% | Jonathan Velásquez |  |
| 8 | 2 | **Pruebas del sistema** | 40d | 2025-04-07 | 2025-05-30 |  | 95% |  | done |
| 9 | 2.1 | Pruebas de Conexión DB | 2d | 2025-04-07 | 2025-04-08 | 7 | 100% | Jonathan Velásquez | done |
| 10 | 2.2 | Pruebas de comunicación entre frontend y backend | 8d | 2025-04-09 | 2025-04-18 | 9 | 100% | Jonathan Velásquez | done |
| 11 | 2.3 | Configuración de Perfile Administrativos | 5d | 2025-04-21 | 2025-04-25 | 10 | 100% | Jonathan Velásquez | done |
| 12 | 2.4 | Pruebas de Ingreso/Login | 5d | 2025-04-28 | 2025-05-02 | 11 | 100% | Jonathan Velásquez | done |
| 13 | 2.5 | Pruebas de almacenar Requerimientos de sistemas. | 10d | 2025-05-05 | 2025-05-16 | 12 | 100% | Jonathan Velásquez | done |
| 14 | 2.6 | Pruebas de Notificaciones Internas | 10d | 2025-05-19 | 2025-05-30 | 13 | 80% | Jonathan Velásquez | done |
| 15 | 3 | **Carga de datos** | 112d | 2025-04-28 | 2025-09-30 |  | 53% |  |  |
| 16 | 3.1 | Registro manual de funcionarios | 112d | 2025-04-28 | 2025-09-30 | 11 | 50% | Jonathan Velásquez y Sofia Cortez |  |
| 17 | 3.2 | Registro de Computadores Municipales | 112d | 2025-04-28 | 2025-09-30 | 11 | 50% | Jonathan Velásquez y Sofia Cortez |  |
| 18 | 3.3 | Registro de Sistemas Municipales | 10d | 2025-04-28 | 2025-05-09 | 11 | 100% | Jonathan Velásquez | done |
| 19 | 3.4 | Verificar relación entre Funcionarios, Sistemas y Computadores. | 5d | 2025-05-12 | 2025-05-16 | 18 | 100% | Jonathan Velásquez | done |
| 20 | 3.5 | Generar Informes y Listados | 10d | 2025-06-02 | 2025-06-13 | 14 | 60% | Jonathan Velásquez |  |
| 21 | 4 | Corrección de errores | 135d | 2025-03-25 | 2025-09-30 |  | 80% | Jonathan Velásquez |  |

Notes:
- 14: Las pruebas tuvieron errores ya que no verifica a quien notificar.
- 16: El proceso va en la mitad de los funcionarios Ingresados (300 aprox.)
- 17: El proceso va en la mitad de los Computadores Ingresados (300 aprox.)
- 20: Falta mejorar y agregar estadisticas sobre los informes.
